# Sample Substation Project

How a schedule from MS Project XML changed from version to version. A marks actual dates.

## Version 1 (data date 2026-11-10, saved 2026-09-20)

Note of the change: Add three MSPDI snapshots (t0/t1/t2) and fix the project switcher

| ID | WBS | Task | Duration | Start | Finish | Predecessors | Complete | Total float |
| --- | --- | --- | --- | --- | --- | --- | --- | --- |
| 1 | 1 | **Sample Substation Project** | 120d | 2026-10-01 | 2027-01-29 |  |  | 0d |
| 2 | 1.1 | **Engineering** | 30d | 2026-10-01 | 2026-10-31 |  |  | 0d |
| 3 |  | Design Basis Report | 10d | 2026-10-01 A | 2026-10-11 |  | 100% |  |
| 4 |  | Detailed Design | 20d | 2026-10-11 | 2026-10-31 | 3 | 100% |  |
| 5 |  | Design Review | 5d | 2026-10-21 | 2026-10-26 | 4SS+10d | 100% |  |
| 6 | 1.2 | **Procurement** | 60d | 2026-10-16 | 2026-12-15 |  |  | 0d |
| 7 |  | Transformer Order | 5d | 2026-10-16 A | 2026-10-21 A | 4SS+5d | 100% |  |
| 8 |  | Transformer Delivery | 55d | 2026-10-21 A | 2026-12-15 | 7 | 45% | 0d |
| 9 | 1.3 | **Civil Works** | 50d | 2026-10-31 | 2026-12-20 |  |  | 0d |
| 10 |  | Site Clearance | 10d | 2026-10-31 | 2026-11-10 | 4 | 40% | 0d |
| 11 |  | Foundations | 25d | 2026-11-10 | 2026-12-05 | 10 |  | 0d |
| 12 |  | Cable Trenches | 15d | 2026-11-20 | 2026-12-05 | 11SS+10d |  | 0d |
| 13 | 1.4 | **Installation** | 40d | 2026-12-05 | 2027-01-14 |  |  | 0d |
| 14 |  | Transformer Erection | 15d | 2026-12-15 | 2026-12-30 | 11FS+10d, 8 |  | 0d |
| 15 |  | Cabling | 20d | 2026-12-05 | 2026-12-25 | 12 |  | 0d |
| 16 |  | Protection & Control | 10d | 2027-01-04 | 2027-01-14 | 14FF+5d, 15 |  | 0d |
| 17 | 1.5 | **Commissioning** | 15d | 2027-01-14 | 2027-01-29 |  |  | 0d |
| 18 |  | Pre-commissioning Tests | 10d | 2027-01-14 | 2027-01-24 | 16 |  | 0d |
| 19 |  | Energisation | 5d | 2027-01-24 | 2027-01-29 | 18 |  | 0d |

## Version 2 (data date 2026-11-10, saved 2026-09-28)

Note of the change: Merge pull request #2 from mahajanvanisha724-cmd/feat/cpm-relevel

Last finish stays 2027-01-29.

Changed:

| ID | Task | Predecessors |
| --- | --- | --- |
| 16 | Protection & Control | 14FF+5d, 15 → 14FS+5d, 15 |
